# Developing Al-Mirath

Schedule from MS Project, 2017-12-19 to 2018-01-09, A marks actual dates.

## Calendars

- Standard: Mon-Fri 08:00-12:00, 13:00-17:00; Sat-Sun off.

## Resources

| Resource |
| --- |
| Management |
| Project Manager |
| Analyst |
| Developer |
| Testers |
| Trainers |
| Technical Communicators |
| Deployment Team |

## Schedule

| ID | WBS | Task | Type | Duration | Start | Finish | Predecessors | Complete | Remaining | Total slack | Free slack | Resources | Work | Actual work |
| --- | --- | --- | --- | --- | --- | --- | --- | --- | --- | --- | --- | --- | --- | --- |
| 1 | 1 | **Building Static App** |  | 8.75d | 2017-12-19 A | 2017-12-29 |  | 89% | 1d | 29.25d |  | Developer | 164h | 148h |
| 2 | 1.1 | Setup MVC Project |  | 2h | 2017-12-19 A | 2017-12-19 A |  | 100% |  |  |  | Developer | 2h | 2h |
| 3 | 1.2 | Design The Layout & Theme |  | 4h | 2017-12-19 A | 2017-12-19 A | 2 | 100% |  |  |  | Developer | 4h | 4h |
| 4 | 1.3 | Design The Pages |  | 3d | 2017-12-19 A | 2017-12-22 A | 3 | 100% |  |  |  | Developer | 24h | 24h |
| 5 | 1.4 | Inquire about the design of details and ayat pages |  | 1d | 2017-12-22 A | 2017-12-25 A | 4 | 100% |  |  |  | Developer | 8h | 8h |
| 6 | 1.5 | Call The Printer API |  | 1d | 2017-12-25 | 2017-12-26 | 5 |  |  | 32.25d |  | Developer | 8h |  |
| 7 | 1.6 | Review With Stakeholder |  | 3d | 2017-12-26 A | 2017-12-29 A | 6, 5 | 100% |  |  |  | Developer; Technical Communicators | 48h | 48h |
| 8 | 2 | **Moving Data Into Controllers** |  | 7d | 2017-12-29 A | 2018-01-09 |  | 29% | 5d | 22.25d |  | Developer | 104h | 40h |
| 9 | 2.1 | Ask for the needed Ayat |  | 1d | 2017-12-29 | 2018-01-01 | 7 |  |  | 27.25d | 0d | Analyst | 8h |  |
| 10 | 2.2 | Get Ayat from API |  | 1d | 2018-01-01 | 2018-01-02 | 9 |  |  | 27.25d |  | Analyst | 8h |  |
| 11 | 2.3 | Get Alwaratha from page |  | 1d | 2018-01-02 A | 2018-01-03 A | 10 | 100% |  |  |  | Project Manager | 8h | 8h |
| 12 | 2.4 | Use controller to show results |  | 1d | 2018-01-03 A | 2018-01-04 A | 11 | 100% |  |  |  | Project Manager; Analyst | 16h | 16h |
| 13 | 2.5 | Use controller to show details |  | 1d | 2018-01-04 | 2018-01-05 | 12 |  |  | 22.25d | 0d | Analyst | 8h |  |
| 14 | 2.6 | Test and verify |  | 2d | 2018-01-05 | 2018-01-09 | 13 |  |  | 22.25d |  |  |  |  |
| 15 | 3 | **Developing The Algorithms API** |  | 11d | 2017-12-19 | 2018-01-02 |  |  |  | 0d |  | Developer | 152h |  |
| 16 | 3.1 | Understand the rules |  | 1d | 2017-12-19 | 2017-12-19 |  |  |  | 0d |  | Developer | 8h |  |
| 17 | 3.2 | Design the algorithms |  | 2d | 2017-12-20 | 2017-12-21 | 16 |  |  | 0d |  | Developer | 16h |  |
| 18 | 3.3 | Develop the algorithms |  | 2d | 2017-12-22 | 2017-12-25 | 17 |  |  | 0d |  | Developer | 16h |  |
| 19 | 3.4 | Test algorithms with Postman |  | 1d | 2017-12-26 | 2017-12-26 | 18 |  |  | 0d |  | Developer | 8h |  |
| 20 | 3.5 | Call API from controller |  | 2d | 2017-12-27 | 2017-12-28 | 19 |  |  | 0d |  | Developer | 16h |  |
| 21 | 3.6 | Develop controller/API error trapping |  | 3d | 2017-12-29 | 2018-01-02 | 20 |  |  | 0d |  |  |  |  |
| 22 | 4 | Result Printing | milestone, manual | 0d | 2017-12-19 | 2017-12-19 |  |  |  |  |  |  | 280h |  |
| 38 | 5 | Details Printing | milestone, manual | 0d | 2017-12-19 | 2017-12-19 |  |  |  |  |  |  | 256h |  |
| 47 | 6 | Testing | milestone, manual | 0d | 2017-12-19 | 2017-12-19 |  |  |  |  |  |  | 336h |  |
| 57 | 7 | Deployment | manual | 1d | 2017-12-19 | 2017-12-19 |  |  |  |  |  |  | 40h |  |
| 64 | 8 | Post Implementation Review | manual | 1d | 2017-12-26 | 2017-12-26 |  |  |  |  |  |  | 24h |  |
